Schedule from MS Project, 2020-04-13 to 2020-06-19, scheduled back from the finish, costs in ¥.

## Calendars

- 标准: Mon-Fri 08:00-12:00, 13:00-17:00; Sat-Sun off.

## Resources

| Resource |
| --- |
| 项目经理 |
| 需求专家 |
| UI专家 |
| 设计专家 |
| 质量专家 |
| 测试员1 |
| 程序员1 |
| 程序员2 |
| 程序员3 |
| 测试员2 |

## Schedule

| ID | WBS | Task | Duration | Start | Finish | Predecessors | Total slack | Free slack | Constraint | Resources | Work | Cost |
| --- | --- | --- | --- | --- | --- | --- | --- | --- | --- | --- | --- | --- |
| 1 | 1 | **启动** | 6d? | 2020-04-13 | 2020-04-20 |  | 0d |  | as late as possible |  | 152h | 11,700 |
| 2 | 1.1 | 组建核心团队 | 1d | 2020-04-15 | 2020-04-15 |  | 2d | 0d | as late as possible | 项目经理; UI专家; 设计专家; 需求专家; 质量专家 | 40h | 2,950 |
| 3 | 1.2 | 任命项目经理 | 1d | 2020-04-14 | 2020-04-14 |  | 1d | 0d | as late as possible | 项目经理 | 8h | 840 |
| 4 | 1.3 | 制定里程碑计划 | 1d? | 2020-04-16 | 2020-04-16 |  | 3d | 0d | as late as possible | 项目经理 | 8h | 840 |
| 5 | 1.4 | 分析干系人 | 1d? | 2020-04-13 | 2020-04-13 |  | 0d |  | as late as possible | 项目经理 | 8h | 840 |
| 6 | 1.5 | 制定项目章程 | 1d? | 2020-04-17 | 2020-04-17 | 2, 3, 4, 5 | 0d |  | as late as possible | 项目经理 | 8h | 840 |
| 7 | 1.6 | 开项目启动大会 | 1d | 2020-04-20 | 2020-04-20 | 6 | 0d |  | as late as possible | 项目经理; 需求专家; UI专家; 设计专家; 质量专家; 测试员2; 测试员1; 程序员1; 程序员2; 程序员3 | 80h | 5,390 |
| 8 | 2 | **规划** | 21d | 2020-04-21 | 2020-05-19 |  | 3d | 0d | as late as possible |  | 200h | 19,390 |
| 9 | 2.1 | **规划范围** | 4d | 2020-04-21 | 2020-04-24 |  | 0d |  | as late as possible |  | 48h | 4,150 |
| 10 | 2.1.1 | 制定需求说明书 | 1d | 2020-04-21 | 2020-04-21 | 7 | 0d |  | as late as possible | 需求专家 | 8h | 500 |
| 11 | 2.1.2 | 界面设计 | 1d | 2020-04-22 | 2020-04-22 | 10 | 0d |  | as late as possible | UI专家 | 8h | 500 |
| 12 | 2.1.3 | 详细设计说明书 | 1d | 2020-04-22 | 2020-04-22 | 10 | 0d |  | as late as possible | 设计专家 | 8h | 630 |
| 13 | 2.1.4 | 范围说明书 | 1d | 2020-04-22 | 2020-04-22 | 10 | 0d |  | as late as possible | 项目经理 | 8h | 840 |
| 14 | 2.1.5 | 创建WBS | 1d | 2020-04-23 | 2020-04-23 | 11, 12, 13 | 0d |  | as late as possible | 项目经理 | 8h | 840 |
| 15 | 2.1.6 | 形成范围基准 | 1d | 2020-04-24 | 2020-04-24 | 14 | 0d |  | as late as possible | 项目经理 | 8h | 840 |
| 16 | 2.2 | **规划时间** | 7d | 2020-04-27 | 2020-05-05 |  | 0d |  | as late as possible |  | 40h | 4,200 |
| 17 | 2.2.1 | 排列工作包顺序 | 1d | 2020-04-27 | 2020-04-27 | 15 | 0d |  | as late as possible | 项目经理 | 8h | 840 |
| 18 | 2.2.2 | 估算资源 | 1d | 2020-04-28 | 2020-04-28 | 17 | 0d |  | as late as possible | 项目经理 | 8h | 840 |
| 19 | 2.2.3 | 估算持续时间 | 1d | 2020-04-29 | 2020-04-29 | 18 | 0d |  | as late as possible | 项目经理 | 8h | 840 |
| 20 | 2.2.4 | 指定进度计划 | 1d | 2020-05-04 | 2020-05-04 | 19 | 0d |  | as late as possible | 项目经理 | 8h | 840 |
| 21 | 2.2.5 | 形成进度基准 | 1d | 2020-05-05 | 2020-05-05 | 20 | 0d |  | as late as possible | 项目经理 | 8h | 840 |
| 22 | 2.3 | **规划成本** | 3d | 2020-05-06 | 2020-05-08 |  | 0d |  | as late as possible |  | 24h | 2,520 |
| 23 | 2.3.1 | 项目成本估算 | 1d | 2020-05-06 | 2020-05-06 | 21 | 0d |  | as late as possible | 项目经理 | 8h | 840 |
| 24 | 2.3.2 | 项目预算 | 1d | 2020-05-07 | 2020-05-07 | 23 | 0d |  | as late as possible | 项目经理 | 8h | 840 |
| 25 | 2.3.3 | 形成范围基准 | 1d | 2020-05-08 | 2020-05-08 | 24 | 0d |  | as late as possible | 项目经理 | 8h | 840 |

| ID | WBS | Task | Duration | Start | Finish | Predecessors | Total slack | Free slack | Constraint | Resources | Work | Cost |
| --- | --- | --- | --- | --- | --- | --- | --- | --- | --- | --- | --- | --- |
| 26 | 2.4 | **规划质量** | 2d | 2020-05-12 | 2020-05-13 |  | 12d | 0d | as late as possible |  | 16h | 960 |
| 27 | 2.4.1 | 制定测试计划 | 1d | 2020-05-13 | 2020-05-13 | 15 | 12d | 0d | as late as possible | 质量专家 | 8h | 480 |
| 28 | 2.4.2 | 制定测试用例 | 1d | 2020-05-12 | 2020-05-12 |  | 21d | 0d | as late as possible | 质量专家 | 8h | 480 |
| 29 | 2.5 | **规划人力资源** | 2d | 2020-05-11 | 2020-05-12 |  | 8d | 0d | as late as possible |  | 16h | 1,680 |
| 30 | 2.5.1 | 制定人力资源计划 | 1d | 2020-05-11 | 2020-05-11 | 18 | 8d | 0d | as late as possible | 项目经理 | 8h | 840 |
| 31 | 2.5.2 | 制定人员配备管理计划 | 1d | 2020-05-12 | 2020-05-12 | 30 | 8d | 0d | as late as possible | 项目经理 | 8h | 840 |
| 32 | 2.6 | **规划沟通** | 1d | 2020-05-13 | 2020-05-13 |  | 8d | 0d | as late as possible |  | 8h | 840 |
| 33 | 2.6.1 | 制定沟通管理计划 | 1d | 2020-05-13 | 2020-05-13 | 31 | 8d | 0d | as late as possible | 项目经理 | 8h | 840 |
| 34 | 2.7 | **规划采购** | 2d | 2020-04-30 | 2020-05-01 |  | 1d | 0d | as late as possible |  | 16h | 1,680 |
| 35 | 2.7.1 | 自制外购分析 | 1d | 2020-04-30 | 2020-04-30 | 18 | 1d | 0d | as late as possible | 项目经理 | 8h | 840 |
| 36 | 2.7.2 | 制定采购文件 | 1d | 2020-05-01 | 2020-05-01 | 35 | 1d | 0d | as late as possible | 项目经理 | 8h | 840 |
| 37 | 2.8 | **规划风险** | 3d | 2020-05-14 | 2020-05-18 |  | 3d | 0d | as late as possible |  | 24h | 2,520 |
| 38 | 2.8.1 | 识别风险 | 1d | 2020-05-14 | 2020-05-14 | 16, 22, 26, 29 | 3d | 0d | as late as possible | 项目经理 | 8h | 840 |
| 39 | 2.8.2 | 风险分析 | 1d | 2020-05-15 | 2020-05-15 | 38 | 3d | 0d | as late as possible | 项目经理 | 8h | 840 |
| 40 | 2.8.3 | 制定风险登记册 | 1d | 2020-05-18 | 2020-05-18 | 39 | 3d | 0d | as late as possible | 项目经理 | 8h | 840 |
| 41 | 2.9 | 规划整合 | 1d | 2020-05-19 | 2020-05-19 | 40 | 3d | 0d | as late as possible | 项目经理 | 8h | 840 |
| 42 | 3 | **执行与监控** | 23d? | 2020-05-20 | 2020-06-19 |  | 3d | 0d | as late as possible |  | 552h | 38,510 |
| 43 | 3.1 | 组建项目团队 | 1d? | 2020-05-20 | 2020-05-20 | 8 | 3d | 0d | as late as possible | 项目经理; 测试员1 | 16h | 1,340 |
| 44 | 3.2 | **项目执行** | 10d | 2020-05-21 | 2020-06-03 |  | 3d | 0d | as late as possible |  | 152h | 9,120 |
| 45 | 3.2.1 | **用户模块** | 10d | 2020-05-21 | 2020-06-03 |  | 3d | 0d | as late as possible |  | 80h | 4,800 |
| 46 | 3.2.1.1 | 注册登录 | 1d | 2020-05-21 | 2020-05-21 | 43 | 3d | 0d | as late as possible | 程序员1 | 8h | 480 |
| 47 | 3.2.1.2 | **首页** | 2d | 2020-05-22 | 2020-05-25 |  | 3d | 0d | as late as possible |  | 16h | 960 |
| 48 | 3.2.1.2.1 | 预订 | 1d | 2020-05-22 | 2020-05-22 | 46 | 3d | 0d | as late as possible | 程序员1 | 8h | 480 |
| 49 | 3.2.1.2.2 | 推荐 | 1d | 2020-05-25 | 2020-05-25 | 46 | 4d | 0d | as late as possible | 程序员1 | 8h | 480 |

| ID | WBS | Task | Duration | Start | Finish | Predecessors | Total slack | Free slack | Constraint | Resources | Work | Cost |
| --- | --- | --- | --- | --- | --- | --- | --- | --- | --- | --- | --- | --- |
| 50 | 3.2.1.3 | **搜索** | 3d | 2020-05-26 | 2020-05-28 |  | 4d | 0d | as late as possible |  | 24h | 1,440 |
| 51 | 3.2.1.3.1 | 景点搜索 | 1d | 2020-05-26 | 2020-05-26 | 49 | 4d | 0d | as late as possible | 程序员1 | 8h | 480 |
| 52 | 3.2.1.3.2 | 旅游团 | 1d | 2020-05-27 | 2020-05-27 | 51 | 4d | 0d | as late as possible | 程序员1 | 8h | 480 |
| 53 | 3.2.1.3.3 | 攻略 | 1d | 2020-05-28 | 2020-05-28 | 52 | 4d | 0d | as late as possible | 程序员1 | 8h | 480 |
| 54 | 3.2.1.4 | **个人界面** | 4d | 2020-05-29 | 2020-06-03 |  | 4d | 0d | as late as possible |  | 32h | 1,920 |
| 55 | 3.2.1.4.1 | 支付 | 1d | 2020-05-29 | 2020-05-29 | 53 | 4d | 0d | as late as possible | 程序员1 | 8h | 480 |
| 56 | 3.2.1.4.2 | 订单 | 1d | 2020-06-01 | 2020-06-01 | 55 | 4d | 0d | as late as possible | 程序员1 | 8h | 480 |
| 57 | 3.2.1.4.3 | 点评 | 1d | 2020-06-02 | 2020-06-02 | 56 | 4d | 0d | as late as possible | 程序员1 | 8h | 480 |
| 58 | 3.2.1.4.4 | 出行提醒 | 1d | 2020-06-03 | 2020-06-03 | 57 | 4d | 0d | as late as possible | 程序员1 | 8h | 480 |
| 59 | 3.2.2 | **商家模块** | 5d | 2020-05-28 | 2020-06-03 |  | 8d | 0d | as late as possible |  | 40h | 2,400 |
| 60 | 3.2.2.1 | 注册入住 | 1d | 2020-05-28 | 2020-05-28 | 43 | 8d | 0d | as late as possible | 程序员2 | 8h | 480 |
| 61 | 3.2.2.2 | 商品管理 | 1d | 2020-05-29 | 2020-05-29 | 60 | 8d | 0d | as late as possible | 程序员2 | 8h | 480 |
| 62 | 3.2.2.3 | 订单处理 | 1d | 2020-06-01 | 2020-06-01 | 61 | 8d | 0d | as late as possible | 程序员2 | 8h | 480 |
| 63 | 3.2.2.4 | 统计 | 1d | 2020-06-02 | 2020-06-02 | 62 | 8d | 0d | as late as possible | 程序员2 | 8h | 480 |
| 64 | 3.2.2.5 | 商家配置 | 1d | 2020-06-03 | 2020-06-03 | 63 | 8d | 0d | as late as possible | 程序员2 | 8h | 480 |
| 65 | 3.2.3 | **管理员模块** | 4d | 2020-05-29 | 2020-06-03 |  | 9d | 0d | as late as possible |  | 32h | 1,920 |
| 66 | 3.2.3.1 | 商家审核 | 1d | 2020-05-29 | 2020-05-29 | 43 | 9d | 0d | as late as possible | 程序员3 | 8h | 480 |
| 67 | 3.2.3.2 | 促销活动 | 1d | 2020-06-01 | 2020-06-01 | 66 | 9d | 0d | as late as possible | 程序员3 | 8h | 480 |
| 68 | 3.2.3.3 | 统计分析 | 1d | 2020-06-02 | 2020-06-02 | 67 | 9d | 0d | as late as possible | 程序员3 | 8h | 480 |
| 69 | 3.2.3.4 | 备份 | 1d | 2020-06-03 | 2020-06-03 | 68 | 9d | 0d | as late as possible | 程序员3 | 8h | 480 |
| 70 | 3.3 | **项目监控** | 5d | 2020-06-12 | 2020-06-18 |  | 19d | 0d | as late as possible |  | 72h | 5,780 |
| 71 | 3.3.1 | 各项指标监控 | 1d | 2020-06-12 | 2020-06-12 | 43 | 19d | 0d | as late as possible | 测试员1; 项目经理 | 16h | 1,340 |
| 72 | 3.3.2 | 监控评审 | 1d | 2020-06-15 | 2020-06-15 | 71 | 19d | 0d | as late as possible | 设计专家; 项目经理 | 16h | 1,470 |
| 73 | 3.3.3 | 变更评审 | 1d | 2020-06-17 | 2020-06-17 | 72 | 19d | 0d | as late as possible | 设计专家; 项目经理 | 16h | 1,470 |
| 74 | 3.3.4 | 例会 | 2d | 2020-06-17 | 2020-06-18 | 43 | 22d | 0d | as late as possible | UI专家; 测试员1; 测试员2 | 24h | 1,500 |

| ID | WBS | Task | Duration | Start | Finish | Predecessors | Total slack | Free slack | Constraint | Resources | Work | Cost |
| --- | --- | --- | --- | --- | --- | --- | --- | --- | --- | --- | --- | --- |
| 75 | 3.4 | **管理干系人** | 4d | 2020-06-11 | 2020-06-16 |  | 18d | 0d | as late as possible |  | 24h | 2,310 |
| 76 | 3.4.1 | 发布项目信息 | 1d | 2020-06-16 | 2020-06-16 | 43 | 21d | 0d | as late as possible | 设计专家 | 8h | 630 |
| 77 | 3.4.2 | 报告监控指标 | 1d | 2020-06-16 | 2020-06-16 | 43 | 21d | 0d | as late as possible | 项目经理 | 8h | 840 |
| 78 | 3.4.3 | 干系人沟通 | 1d | 2020-06-11 | 2020-06-11 | 43 | 18d | 0d | as late as possible | 项目经理 | 8h | 840 |
| 79 | 3.5 | **团队建设** | 10d | 2020-06-08 | 2020-06-19 |  | 15d | 0d | as late as possible |  | 240h | 16,170 |
| 80 | 3.5.1 | 培训 | 5d | 2020-06-10 | 2020-06-18 | 43 | 17d | 0d | as late as possible | UI专家; 测试员1; 测试员2; 程序员1; 程序员2; 程序员3; 设计专家; 项目经理; 需求专家; 质量专家 | 80h | 5,390 |
| 81 | 3.5.2 | 娱乐活动 | 5d | 2020-06-08 | 2020-06-19 | 43 | 15d | 0d | as late as possible | UI专家; 测试员1; 测试员2; 程序员1; 程序员2; 程序员3; 设计专家; 项目经理; 需求专家; 质量专家 | 80h | 5,390 |
| 82 | 3.5.3 | 沟通 | 5d | 2020-06-09 | 2020-06-18 | 43 | 16d | 0d | as late as possible | UI专家; 测试员1; 测试员2; 程序员1; 程序员2; 程序员3; 设计专家; 项目经理; 需求专家; 质量专家 | 80h | 5,390 |
| 83 | 3.6 | 采购 | 1d | 2020-06-05 | 2020-06-05 | 43 | 14d | 0d | as late as possible | 项目经理 | 8h | 840 |
| 84 | 3.7 | 项目验收 | 4d | 2020-06-04 | 2020-06-12 | 44 | 4d | 0d | as late as possible | UI专家; 设计专家; 项目经理; 需求专家; 质量专家 | 40h | 2,950 |
| 85 | 4 | **收尾** | 2d | 2020-06-18 | 2020-06-19 |  | 3d | 0d | as late as possible |  | 72h | 5,290 |
| 86 | 4.1 | 项目终验 | 2d | 2020-06-18 | 2020-06-19 | 84 | 3d | 0d | as late as possible | UI专家; 设计专家; 项目经理; 需求专家; 质量专家 | 40h | 2,950 |
| 87 | 4.2 | 结束采购 | 1d | 2020-06-19 | 2020-06-19 | 84 | 4d | 0d | as late as possible | 项目经理 | 8h | 840 |
| 88 | 4.3 | 项目内部收尾 | 1d | 2020-06-19 | 2020-06-19 | 84 | 4d | 0d | as late as possible | UI专家; 测试员1; 测试员2 | 24h | 1,500 |
